Schedule from MS Project, 2014-06-03 to 2014-07-31, A marks actual dates.

## Calendars

- 标准: Mon-Fri 08:00-12:00, 13:00-17:00; Sat-Sun off.

## Resources

| Resource |
| --- |
| 戴翔 |
| 产品组 |
| 杨健 |
| 宋涛 |
| 刘俊豪 |
| 李海峰 |
| 黄志超 |
| 梁思敏 |
| 店多 |
| 待定 |
| 待设计 |

## Schedule

| ID | WBS | Task | Duration | Start | Finish | Predecessors | Complete | Remaining | Total slack | Constraint | Resources | Work | Actual work |
| --- | --- | --- | --- | --- | --- | --- | --- | --- | --- | --- | --- | --- | --- |
| 1 | 1 | **一、产品优化** | 19d? | 2014-06-04 A | 2014-06-30 |  | 58% | 7.98d? | 23d |  |  | 432h | 240h |
| 2 | 1.1 | 微信下载页面改为打开浏览器后自动下载 | 2d? | 2014-06-04 A | 2014-06-05 A |  | 100% |  |  | finish no earlier than 2014-06-05 | 戴翔 | 16h | 16h |
| 3 | 1.2 | **注册流程优化** | 12d? | 2014-06-04 A | 2014-06-19 A |  | 100% |  |  |  |  | 224h | 224h |
| 4 | 1.2.1 | 流程设计 | 1d? | 2014-06-05 A | 2014-06-05 A |  | 100% |  |  | finish no earlier than 2014-06-05 | 产品组; 杨健 | 16h | 16h |
| 5 | 1.2.2 | iOS调整 | 10d? | 2014-06-06 A | 2014-06-19 A | 4 | 100% |  |  | finish no earlier than 2014-06-13 | 刘俊豪 | 80h | 80h |
| 6 | 1.2.3 | Android调整 | 10d? | 2014-06-06 A | 2014-06-19 A | 4 | 100% |  |  | finish no earlier than 2014-06-13 | 黄志超 | 80h | 80h |
| 7 | 1.2.4 | 后台调整 | 5d? | 2014-06-09 A | 2014-06-13 A | 4 | 100% |  |  | finish no earlier than 2014-06-13 | 戴翔 | 40h | 40h |
| 8 | 1.2.5 | 修改密码功能 | 1d? | 2014-06-04 A | 2014-06-04 A |  | 100% |  |  |  | 产品组 | 8h | 8h |
| 9 | 1.3 | **1.0.8版本功能优化目标** | 9d? | 2014-06-12 | 2014-06-24 |  |  |  | 4d |  |  | 104h |  |
| 10 | 1.3.1 | 手机充值模块不设权限 | 4d? | 2014-06-12 | 2014-06-17 |  |  |  | 9d | finish no earlier than 2014-06-17 | 刘俊豪; 黄志超 | 64h |  |
| 11 | 1.3.2 | 系统设置功能调整 | 1d? | 2014-06-17 | 2014-06-17 |  |  |  | 9d | finish no earlier than 2014-06-17 | 刘俊豪; 黄志超 | 16h |  |
| 12 | 1.3.3 | 用户修改密码功能修正 | 1d? | 2014-06-18 | 2014-06-18 |  |  |  | 8d | finish no earlier than 2014-06-18 | 刘俊豪; 黄志超 | 16h |  |
| 13 | 1.3.4 | Android的找回密码功能 | 1d? | 2014-06-19 | 2014-06-19 |  |  |  | 7d | finish no earlier than 2014-06-19 | 黄志超 | 8h |  |
| 14 | 1.3.5 | 代理商功能调测 | 1d? | 2014-06-24 | 2014-06-24 | 21 |  |  | 4d | finish no earlier than 2014-06-24 |  |  |  |
| 15 | 1.3.6 | 水电煤修改为欧飞接口 | 2d? | 2014-06-23 | 2014-06-24 | 39 |  |  | 4d | finish no earlier than 2014-06-24 |  |  |  |
| 16 | 1.4 | 热门应用链接 | 1d? | 2014-06-30 | 2014-06-30 |  |  |  | 23d | finish no earlier than 2014-06-30 | 待定 | 8h |  |
| 17 | 1.5 | **首页界面改版** | 5d? | 2014-06-23 | 2014-06-27 |  |  |  | 1d |  |  | 80h |  |
| 18 | 1.5.1 | 界面风格调整 | 5d? | 2014-06-23 | 2014-06-27 |  |  |  | 1d | finish no earlier than 2014-06-27 | 产品组 | 40h |  |
| 19 | 1.5.2 | 多界面风格切换 | 5d? | 2014-06-23 | 2014-06-27 |  |  |  | 1d | finish no earlier than 2014-06-27 | 产品组 | 40h |  |
| 20 | 2 | **二、产品模块开发** | 43d? | 2014-06-03 A | 2014-07-31 |  | 30% | 29.96d? | 0d |  |  | 1192h | 400h |
| 21 | 2.1 | **代理商销售** | 12d? | 2014-06-03 A | 2014-06-18 A |  | 100% |  |  |  |  | 208h | 208h |
| 22 | 2.1.1 | 原型设计 | 1d? | 2014-06-10 A | 2014-06-10 A |  | 100% |  |  | finish no earlier than 2014-06-10 | 杨健; 梁思敏 | 16h | 16h |
| 23 | 2.1.2 | iOS开发 | 3d? | 2014-06-11 A | 2014-06-13 A | 22 | 100% |  |  | start no earlier than 2014-06-11 | 刘俊豪 | 24h | 24h |
| 24 | 2.1.3 | Android开发 | 2d? | 2014-06-12 A | 2014-06-13 A | 22 | 100% |  |  | finish no earlier than 2014-06-13 | 黄志超 | 16h | 16h |
| 25 | 2.1.4 | 后台接口开发 | 7d? | 2014-06-03 A | 2014-06-11 A |  | 100% |  |  | finish no earlier than 2014-06-11 | 戴翔 | 56h | 56h |
| 26 | 2.1.5 | 店多后台开发 | 12d? | 2014-06-03 A | 2014-06-18 A |  | 100% |  |  | start no earlier than 2014-06-03 | 店多 | 96h | 96h |

| ID | WBS | Task | Duration | Start | Finish | Predecessors | Complete | Remaining | Total slack | Constraint | Resources | Work | Actual work |
| --- | --- | --- | --- | --- | --- | --- | --- | --- | --- | --- | --- | --- | --- |
| 27 | 2.2 | **明盛商城对接** | 23d? | 2014-07-01 | 2014-07-31 |  |  |  | 0d |  | 待设计 | 184h |  |
| 28 | 2.2.1 | 申请信用卡 | 23d? | 2014-07-01 | 2014-07-31 |  |  |  | 0d | finish no earlier than 2014-07-31 |  |  |  |
| 29 | 2.2.2 | 承兑兑现 | 23d? | 2014-07-01 | 2014-07-31 |  |  |  | 0d | finish no earlier than 2014-07-31 |  |  |  |
| 30 | 2.2.3 | 网上订购 | 23d? | 2014-07-01 | 2014-07-31 |  |  |  | 0d | finish no earlier than 2014-07-31 |  |  |  |
| 31 | 2.3 | **我的钱包** | 6d? | 2014-06-23 | 2014-06-30 |  |  |  | 23d |  |  | 592h |  |
| 32 | 2.3.1 | **原型设计** | 6d? | 2014-06-23 | 2014-06-30 |  |  |  | 23d |  | 杨健; 梁思敏 | 592h |  |
| 33 | 2.3.1.1 | 账户余额 | 6d? | 2014-06-23 | 2014-06-30 |  |  |  | 23d | finish no earlier than 2014-06-30 | 杨健; 梁思敏 | 96h |  |
| 34 | 2.3.1.2 | 充值 | 6d? | 2014-06-23 | 2014-06-30 |  |  |  | 23d | finish no earlier than 2014-06-30 | 杨健; 梁思敏 | 96h |  |
| 35 | 2.3.1.3 | 转账 | 6d? | 2014-06-23 | 2014-06-30 |  |  |  | 23d | finish no earlier than 2014-06-30 | 杨健; 梁思敏 | 96h |  |
| 36 | 2.3.1.4 | 提现 | 6d? | 2014-06-23 | 2014-06-30 |  |  |  | 23d | finish no earlier than 2014-06-30 | 杨健; 梁思敏 | 96h |  |
| 37 | 2.3.1.5 | 红包 | 6d? | 2014-06-23 | 2014-06-30 |  |  |  | 23d | finish no earlier than 2014-06-30 | 杨健; 梁思敏 | 96h |  |
| 38 | 2.3.1.6 | 收支记录 | 1d? | 2014-06-30 | 2014-06-30 |  |  |  | 23d | finish no earlier than 2014-06-30 | 杨健; 梁思敏 | 16h |  |
| 39 | 2.4 | **水电煤气缴费（易赛改欧飞）** | 8d? | 2014-06-04 A | 2014-06-13 A |  | 100% |  |  |  |  | 56h | 56h |
| 40 | 2.4.1 | 原型设计 | 1d? | 2014-06-04 A | 2014-06-04 A |  | 100% |  |  |  | 杨健; 梁思敏 | 16h | 16h |
| 41 | 2.4.2 | 接口封装 | 1d? | 2014-06-13 A | 2014-06-13 A | 40 | 100% |  |  | finish no earlier than 2014-06-13 | 戴翔 | 8h | 8h |
| 42 | 2.4.3 | iOS开发 | 2d? | 2014-06-09 A | 2014-06-10 A | 40 | 100% |  |  | finish no earlier than 2014-06-10 | 宋涛 | 16h | 16h |
| 43 | 2.4.4 | Android开发 | 2d? | 2014-06-09 A | 2014-06-10 A | 40 | 100% |  |  | finish no earlier than 2014-06-10 | 李海峰 | 16h | 16h |
| 44 | 2.5 | **游戏直充（欧飞）** | 16d? | 2014-06-06 A | 2014-06-27 |  | 80% | 3.2d? | 24d |  |  | 152h | 136h |
| 45 | 2.5.1 | 原型设计 | 2d? | 2014-06-06 A | 2014-06-09 |  | 50% | 1d? | 38d | finish no earlier than 2014-06-09 | 杨健; 梁思敏 | 32h | 16h |
| 46 | 2.5.2 | 接口封装 | 5d? | 2014-06-09 A | 2014-06-13 A | 45 | 100% |  |  | start no earlier than 2014-06-09 | 戴翔 | 40h | 40h |
| 47 | 2.5.3 | iOS开发 | 5d? | 2014-06-09 A | 2014-06-13 A | 45 | 100% |  |  | finish no earlier than 2014-06-13 | 宋涛 | 40h | 40h |
| 48 | 2.5.4 | Android开发 | 5d? | 2014-06-09 A | 2014-06-13 A | 45 | 100% |  |  | finish no earlier than 2014-06-13 | 李海峰 | 40h | 40h |
| 49 | 2.5.5 | 接口调试 | 3d? | 2014-06-25 | 2014-06-27 |  |  |  | 24d | finish no earlier than 2014-06-27 |  |  |  |
| 50 | 2.6 | **车辆缴费** | 4d? | 2014-07-01 | 2014-07-04 |  |  |  | 19d |  |  |  |  |
| 51 | 2.6.1 | 合约选择 | 4d? | 2014-07-01 | 2014-07-04 |  |  |  | 19d | finish no earlier than 2014-07-04 |  |  |  |
