Schedule from MS Project, 2014-06-03 to 2014-11-28, A marks actual dates.

## Calendars

- 标准: Mon-Fri 08:00-12:00, 13:00-17:00; Sat-Sun off.

## Resources

| Resource |
| --- |
| 戴翔 |
| 产品组 |
| 杨健 |
| 宋涛 |
| 刘俊豪 |
| 李海峰 |
| 黄志超 |
| 梁思敏 |
| 店多 |
| 待定 |
| 待设计 |
| 商务部 |

## Schedule

| ID | WBS | Task | Duration | Start | Finish | Predecessors | Complete | Remaining | Total slack | Constraint | Resources | Work | Actual work |
| --- | --- | --- | --- | --- | --- | --- | --- | --- | --- | --- | --- | --- | --- |
| 1 | 1 | **一、产品版本发布计划** | 128d? | 2014-06-04 A | 2014-11-28 |  | 41% | 75.63d? | 0d |  |  | 1248h | 768h |
| 2 | 1.1 | 微信下载页面改为打开浏览器后自动下载 | 44d? | 2014-06-04 A | 2014-08-04 A |  | 100% |  |  | finish no earlier than 2014-08-04 |  |  |  |
| 3 | 1.2 | **注册流程优化** | 12d? | 2014-06-04 A | 2014-06-19 A |  | 100% |  |  |  |  | 224h | 224h |
| 4 | 1.2.1 | 流程设计 | 1d? | 2014-06-05 A | 2014-06-05 A |  | 100% |  |  | finish no earlier than 2014-06-05 | 产品组; 杨健 | 16h | 16h |
| 5 | 1.2.2 | iOS调整 | 10d? | 2014-06-06 A | 2014-06-19 A | 4 | 100% |  |  | finish no earlier than 2014-06-13 | 刘俊豪 | 80h | 80h |
| 6 | 1.2.3 | Android调整 | 10d? | 2014-06-06 A | 2014-06-19 A | 4 | 100% |  |  | finish no earlier than 2014-06-13 | 黄志超 | 80h | 80h |
| 7 | 1.2.4 | 后台调整 | 5d? | 2014-06-09 A | 2014-06-13 A | 4 | 100% |  |  | finish no earlier than 2014-06-13 | 戴翔 | 40h | 40h |
| 8 | 1.2.5 | 修改密码功能 | 1d? | 2014-06-04 A | 2014-06-04 A |  | 100% |  |  |  | 产品组 | 8h | 8h |
| 9 | 1.3 | **2.0.0版本发布目标** | 9d? | 2014-06-12 A | 2014-06-24 A |  | 100% |  |  |  |  | 104h | 104h |
| 10 | 1.3.1 | 手机充值模块不设权限 | 4d? | 2014-06-12 A | 2014-06-17 A |  | 100% |  |  | finish no earlier than 2014-06-17 | 刘俊豪; 黄志超 | 64h | 64h |
| 11 | 1.3.2 | 系统设置功能调整 | 1d? | 2014-06-17 A | 2014-06-17 A |  | 100% |  |  | finish no earlier than 2014-06-17 | 刘俊豪; 黄志超 | 16h | 16h |
| 12 | 1.3.3 | 用户修改密码功能修正 | 1d? | 2014-06-18 A | 2014-06-18 A |  | 100% |  |  | finish no earlier than 2014-06-18 | 刘俊豪; 黄志超 | 16h | 16h |
| 13 | 1.3.4 | Android的找回密码功能 | 1d? | 2014-06-19 A | 2014-06-19 A |  | 100% |  |  | finish no earlier than 2014-06-19 | 黄志超 | 8h | 8h |
| 14 | 1.3.5 | 代理商功能调测 | 1d? | 2014-06-24 A | 2014-06-24 A | 69 | 100% |  |  | finish no earlier than 2014-06-24 |  |  |  |
| 15 | 1.3.6 | 水电煤修改为欧飞接口 | 2d? | 2014-06-23 A | 2014-06-24 A | 90 | 100% |  |  | finish no earlier than 2014-06-24 |  |  |  |
| 16 | 1.4 | **2.0.1版本发布目标** | 20d? | 2014-06-16 A | 2014-07-11 A |  | 100% |  |  |  |  | 440h | 440h |
| 17 | 1.4.1 | **首页界面改版** | 20d? | 2014-06-16 A | 2014-07-11 A |  | 100% |  |  |  |  | 280h | 280h |
| 18 | 1.4.1.1 | 首页新界面设计 | 10d? | 2014-06-16 A | 2014-06-27 A |  | 100% |  |  | finish no earlier than 2014-06-27 | 杨健; 梁思敏 | 160h | 160h |
| 19 | 1.4.1.2 | 界面风格调整 | 5d? | 2014-06-30 A | 2014-07-04 A | 18 | 100% |  |  | start no earlier than 2014-06-30 | 产品组 | 40h | 40h |
| 20 | 1.4.1.3 | 多界面风格切换 | 5d? | 2014-07-07 A | 2014-07-11 A |  | 100% |  |  | start no earlier than 2014-07-07 | 产品组 | 40h | 40h |
| 21 | 1.4.1.4 | 代理商增加在线申请及审批功能 | 5d? | 2014-06-30 A | 2014-07-04 A |  | 100% |  |  | finish no earlier than 2014-07-04 | 产品组 | 40h | 40h |
| 22 | 1.4.2 | 游戏充值模块上线 | 5d? | 2014-06-30 A | 2014-07-04 A |  | 100% |  |  | finish no earlier than 2014-07-04 | 产品组 | 40h | 40h |
| 23 | 1.4.3 | 飞机票预定模块上线 | 10d? | 2014-06-30 A | 2014-07-11 A |  | 100% |  |  | finish no earlier than 2014-07-11 | 产品组 | 80h | 80h |
| 24 | 1.4.4 | 酒店、火车票、景点门票用携程联盟链接嵌入 | 5d? | 2014-06-30 A | 2014-07-04 A |  | 100% |  |  | finish no earlier than 2014-07-04 | 产品组 | 40h | 40h |

| ID | WBS | Task | Duration | Start | Finish | Complete | Remaining | Total slack | Constraint |
| --- | --- | --- | --- | --- | --- | --- | --- | --- | --- |
| 25 | 1.5 | **2.0.4版本发布目标** | 8d? | 2014-07-16 A | 2014-07-25 A | 100% |  |  |  |
| 26 | 1.5.1 | 易宝支付通道对接 | 8d? | 2014-07-16 A | 2014-07-25 A | 100% |  |  | finish no earlier than 2014-07-25 |
| 27 | 1.5.2 | 首页版面及模式优化 | 8d? | 2014-07-16 A | 2014-07-25 A | 100% |  |  | finish no earlier than 2014-07-25 |
| 28 | 1.5.3 | 代理商在线申请、用呼绑定 | 8d? | 2014-07-16 A | 2014-07-25 A | 100% |  |  | finish no earlier than 2014-07-25 |
| 29 | 1.6 | **2.1.0版本发布目标** | 7d? | 2014-08-01 A | 2014-08-11 A | 100% |  |  |  |
| 30 | 1.6.1 | 易宝代付通道对接 | 6d? | 2014-08-01 A | 2014-08-08 A | 100% |  |  | finish no earlier than 2014-08-08 |
| 31 | 1.6.2 | 快捷支付功能 | 2d? | 2014-08-07 A | 2014-08-08 A | 100% |  |  | finish no earlier than 2014-08-08 |
| 32 | 1.6.3 | 首页增加通知公告 | 3d? | 2014-08-04 A | 2014-08-06 A | 100% |  |  | start no earlier than 2014-08-04 |
| 33 | 1.6.4 | 增加一键关注微信嵌套页 | 1d? | 2014-08-07 A | 2014-08-07 A | 100% |  |  | start no earlier than 2014-08-07 |
| 34 | 1.6.5 | 版本功能整合测试 | 2d? | 2014-08-08 A | 2014-08-11 A | 100% |  |  | finish no earlier than 2014-08-11 |
| 35 | 1.7 | **3.0.0版本发布目标** | 7d? | 2014-09-22 A | 2014-09-30 A | 100% |  |  |  |
| 36 | 1.7.1 | 转账汇款流程优化 | 7d? | 2014-09-22 A | 2014-09-30 A | 100% |  |  | start no earlier than 2014-09-22 |
| 37 | 1.7.2 | 模块界面设计统一 | 7d? | 2014-09-22 A | 2014-09-30 A | 100% |  |  | finish no earlier than 2014-09-30 |
| 38 | 1.7.3 | 版本功能整合测试及回归问题修正 | 3d? | 2014-09-26 A | 2014-09-30 A | 100% |  |  | start no earlier than 2014-09-26 |
| 39 | 1.7.4 | 版本发布 | 1d? | 2014-09-30 A | 2014-09-30 A | 100% |  |  | start no earlier than 2014-09-30 |
| 40 | 1.8 | **3.3.0版本发布目标** | 38d? | 2014-10-08 A | 2014-11-28 A | 100% |  |  |  |
| 41 | 1.8.1 | 商城对接（视商务洽谈结果再定） | 20d? | 2014-11-03 A | 2014-11-28 A | 100% |  |  | finish no earlier than 2014-11-28 |
| 42 | 1.8.2 | 汇通宝对接 | 3d? | 2014-10-08 A | 2014-10-10 A | 100% |  |  | finish no earlier than 2014-10-10 |
| 43 | 1.8.3 | 版本功能整合测试及回归问题修正 | 7d? | 2014-10-08 A | 2014-10-16 A | 100% |  |  | start no earlier than 2014-10-08 |
| 44 | 1.8.4 | 版本发布 | 1d? | 2014-10-17 A | 2014-10-17 A | 100% |  |  | start no earlier than 2014-10-17 |
| 45 | 1.9 | **3.4.0版本发布目标** | 15d? | 2014-11-03 A | 2014-11-21 | 2% | 14.68d? | 5d |  |
| 46 | 1.9.1 | 代理商注册入口优化（单独发布V3.3.1） | 1d? | 2014-11-07 A | 2014-11-07 A | 100% |  |  | finish no earlier than 2014-11-07 |
| 47 | 1.9.2 | 飞机票订购支付及分润完善 | 7d? | 2014-11-03 | 2014-11-11 |  |  | 13d | start no earlier than 2014-11-03 |
| 48 | 1.9.3 | 酒店预定业务接口完善（21日如没法完成延迟到下一版本） | 11d? | 2014-11-07 | 2014-11-21 |  |  | 5d | finish no earlier than 2014-11-21 |
| 49 | 1.9.4 | 各家商城订单回执接口及分润报表 | 10d? | 2014-11-03 | 2014-11-14 |  |  | 10d | finish no earlier than 2014-11-14 |
| 50 | 1.9.5 | 短信支付功能 | 8d? | 2014-11-05 | 2014-11-14 |  |  | 10d | finish no earlier than 2014-11-14 |
| 51 | 1.9.6 | 版本功能整合测试及回归问题修正 | 9d? | 2014-11-10 | 2014-11-20 |  |  | 6d | start no earlier than 2014-11-10 |
| 52 | 1.9.7 | 版本发布 | 1d? | 2014-11-21 | 2014-11-21 |  |  | 5d | start no earlier than 2014-11-21 |

| ID | WBS | Task | Type | Duration | Start | Finish | Predecessors | Complete | Remaining | Total slack | Constraint | Resources | Work | Actual work |
| --- | --- | --- | --- | --- | --- | --- | --- | --- | --- | --- | --- | --- | --- | --- |
| 53 | 1.10 | **3.9.0版本发布目标** |  | 75d? | 2014-07-21 | 2014-10-31 |  |  |  | 20d |  |  |  |  |
| 54 | 1.10.1 | 发工资模块 |  | 2d? | 2014-10-09 | 2014-10-10 |  |  |  | 35d | finish no earlier than 2014-10-10 |  |  |  |
| 55 | 1.10.2 | 借记卡还信用卡对接（付临门） |  | 3d? | 2014-10-09 | 2014-10-13 |  |  |  | 34d | finish no earlier than 2014-10-13 |  |  |  |
| 56 | 1.10.3 | 飞机票业务App版 |  | 58d? | 2014-07-21 | 2014-10-08 |  |  |  | 37d | finish no earlier than 2014-10-08 |  |  |  |
| 57 | 1.10.4 | 酒店业务App版 |  | 50d? | 2014-08-11 | 2014-10-17 |  |  |  | 30d | finish no earlier than 2014-10-17 |  |  |  |
| 58 | 1.10.5 | 刷卡器添加授权码支付功能 |  | 10d? | 2014-10-13 | 2014-10-24 |  |  |  | 25d | finish no earlier than 2014-10-24 |  |  |  |
| 59 | 1.10.6 | 统一支付收银台 |  | 10d? | 2014-10-13 | 2014-10-24 |  |  |  | 25d | finish no earlier than 2014-10-24 |  |  |  |
| 60 | 1.10.7 | 通付宝风控体系 |  | 45d? | 2014-08-25 | 2014-10-24 |  |  |  | 25d | finish no earlier than 2014-10-24 |  |  |  |
| 61 | 1.10.8 | 版本功能整合测试及回归问题修正 |  | 4d? | 2014-10-27 | 2014-10-30 |  |  |  | 21d | start no earlier than 2014-10-27 |  |  |  |
| 62 | 1.10.9 | 版本发布 |  | 1d? | 2014-10-31 | 2014-10-31 |  |  |  | 20d | start no earlier than 2014-10-31 |  |  |  |
| 63 | 1.11 | **4.0.0版本发布目标** |  | 20d? | 2014-11-03 | 2014-11-28 |  |  |  | 0d |  | 待定 | 480h |  |
| 64 | 1.11.1 | 虚拟代理商转让相关运作功能 |  | 20d? | 2014-11-03 | 2014-11-28 |  |  |  | 0d | finish no earlier than 2014-11-28 |  |  |  |
| 65 | 1.11.2 | Q币充值优化（腾讯直通车） |  | 20d? | 2014-11-03 | 2014-11-28 |  |  |  | 0d | finish no earlier than 2014-11-28 |  |  |  |
| 66 | 1.11.3 | 电影票预定（兜有） |  | 20d? | 2014-11-03 | 2014-11-28 |  |  |  | 0d | finish no earlier than 2014-11-28 | 待定 | 160h |  |
| 67 | 1.11.4 | 彩票预定业务（彩票365） |  | 20d? | 2014-11-03 | 2014-11-28 |  |  |  | 0d | finish no earlier than 2014-11-28 | 待定 | 160h |  |
| 68 | 2 | **二、产品规划功能** |  | 66d? | 2014-06-03 A | 2014-09-02 |  | 50% | 33d? | 63d |  |  | 2216h | 1376h |
| 69 | 2.1 | **代理商模块** |  | 12d? | 2014-06-03 A | 2014-06-18 A |  | 100% |  |  |  |  | 208h | 208h |
| 70 | 2.1.1 | 原型设计 |  | 1d? | 2014-06-10 A | 2014-06-10 A |  | 100% |  |  | finish no earlier than 2014-06-10 | 杨健; 梁思敏 | 16h | 16h |
| 71 | 2.1.2 | iOS开发 |  | 3d? | 2014-06-11 A | 2014-06-13 A | 70 | 100% |  |  | start no earlier than 2014-06-11 | 刘俊豪 | 24h | 24h |
| 72 | 2.1.3 | Android开发 |  | 2d? | 2014-06-12 A | 2014-06-13 A | 70 | 100% |  |  | finish no earlier than 2014-06-13 | 黄志超 | 16h | 16h |
| 73 | 2.1.4 | 后台接口开发 |  | 7d? | 2014-06-03 A | 2014-06-11 A |  | 100% |  |  | finish no earlier than 2014-06-11 | 戴翔 | 56h | 56h |
| 74 | 2.1.5 | 店多后台开发 |  | 12d? | 2014-06-03 A | 2014-06-18 A |  | 100% |  |  | start no earlier than 2014-06-03 | 店多 | 96h | 96h |
| 75 | 2.2 | **明盛商城对接** |  | 23d? | 2014-08-01 | 2014-09-02 |  |  |  | 63d |  | 待定 | 184h |  |
| 76 | 2.2.1 | 申请信用卡 |  | 23d? | 2014-08-01 | 2014-09-02 |  |  |  | 63d | start no earlier than 2014-08-01 |  |  |  |
| 77 | 2.2.2 | 承兑兑现 |  | 23d? | 2014-08-01 | 2014-09-02 |  |  |  | 63d | start no earlier than 2014-08-01 |  |  |  |
| 78 | 2.2.3 | 网上订购 |  | 23d? | 2014-08-01 | 2014-09-02 |  |  |  | 63d | start no earlier than 2014-08-01 |  |  |  |
| 79 | 2.3 | 热门应用链接 | milestone | 0d? | 2014-08-01 A |  |  | 100% | 0d? | 0d | finish no earlier than 2014-09-01 |  |  |  |

| ID | WBS | Task | Duration | Start | Finish | Predecessors | Complete | Remaining | Total slack | Constraint | Resources | Work | Actual work |
| --- | --- | --- | --- | --- | --- | --- | --- | --- | --- | --- | --- | --- | --- |
| 80 | 2.4 | **我的钱包** | 50d? | 2014-06-23 A | 2014-08-29 |  | 57% | 21.65d? | 65d |  | 待定 | 1616h | 960h |
| 81 | 2.4.1 | **原型设计** | 10d? | 2014-06-23 A | 2014-07-04 A |  | 100% |  |  |  |  | 880h | 880h |
| 82 | 2.4.1.1 | 账户余额 | 10d? | 2014-06-23 A | 2014-07-04 A |  | 100% |  |  | finish no earlier than 2014-07-04 | 杨健; 梁思敏 | 160h | 160h |
| 83 | 2.4.1.2 | 充值 | 10d? | 2014-06-23 A | 2014-07-04 A |  | 100% |  |  | finish no earlier than 2014-07-04 | 杨健; 梁思敏 | 160h | 160h |
| 84 | 2.4.1.3 | 转账 | 10d? | 2014-06-23 A | 2014-07-04 A |  | 100% |  |  | finish no earlier than 2014-07-04 | 杨健; 梁思敏 | 160h | 160h |
| 85 | 2.4.1.4 | 提现 | 10d? | 2014-06-23 A | 2014-07-04 A |  | 100% |  |  | finish no earlier than 2014-07-04 | 杨健; 梁思敏 | 160h | 160h |
| 86 | 2.4.1.5 | 红包 | 10d? | 2014-06-23 A | 2014-07-04 A |  | 100% |  |  | finish no earlier than 2014-07-04 | 杨健; 梁思敏 | 160h | 160h |
| 87 | 2.4.1.6 | 收支记录 | 5d? | 2014-06-30 A | 2014-07-04 A |  | 100% |  |  | finish no earlier than 2014-07-04 | 杨健; 梁思敏 | 80h | 80h |
| 88 | 2.4.2 | 当面付 | 21d? | 2014-08-01 | 2014-08-29 |  |  |  | 65d | finish no earlier than 2014-08-29 | 待定 | 168h |  |
| 89 | 2.4.3 | 功能开发 | 21d? | 2014-08-01 | 2014-08-29 |  |  |  | 65d | finish no earlier than 2014-08-29 | 待定 | 168h |  |
| 90 | 2.5 | **水电煤气缴费（合作需变更）** | 8d? | 2014-06-04 A | 2014-06-13 A |  | 100% |  |  |  |  | 56h | 56h |
| 91 | 2.5.1 | 原型设计 | 1d? | 2014-06-04 A | 2014-06-04 A |  | 100% |  |  |  | 杨健; 梁思敏 | 16h | 16h |
| 92 | 2.5.2 | 接口封装 | 1d? | 2014-06-13 A | 2014-06-13 A | 91 | 100% |  |  | finish no earlier than 2014-06-13 | 戴翔 | 8h | 8h |
| 93 | 2.5.3 | iOS开发 | 2d? | 2014-06-09 A | 2014-06-10 A | 91 | 100% |  |  | finish no earlier than 2014-06-10 | 宋涛 | 16h | 16h |
| 94 | 2.5.4 | Android开发 | 2d? | 2014-06-09 A | 2014-06-10 A | 91 | 100% |  |  | finish no earlier than 2014-06-10 | 李海峰 | 16h | 16h |
| 95 | 2.6 | **游戏直充（欧飞）** | 51d? | 2014-06-06 A | 2014-08-15 A |  | 100% |  |  |  |  | 152h | 152h |
| 96 | 2.6.1 | 原型设计 | 2d? | 2014-06-06 A | 2014-06-09 A |  | 100% |  |  | finish no earlier than 2014-06-09 | 杨健; 梁思敏 | 32h | 32h |
| 97 | 2.6.2 | 接口封装 | 5d? | 2014-06-09 A | 2014-06-13 A | 96 | 100% |  |  | start no earlier than 2014-06-09 | 戴翔 | 40h | 40h |
| 98 | 2.6.3 | iOS开发 | 5d? | 2014-06-09 A | 2014-06-13 A | 96 | 100% |  |  | finish no earlier than 2014-06-13 | 宋涛 | 40h | 40h |
| 99 | 2.6.4 | Android开发 | 5d? | 2014-06-09 A | 2014-06-13 A | 96 | 100% |  |  | finish no earlier than 2014-06-13 | 李海峰 | 40h | 40h |
| 100 | 2.6.5 | 接口调试 | 3d? | 2014-06-25 A | 2014-06-27 A |  | 100% |  |  | finish no earlier than 2014-06-27 |  |  |  |
| 101 | 2.6.6 | 游戏充值优化（本地预存商品及分润） | 5d? | 2014-08-11 A | 2014-08-15 A |  | 100% |  |  | finish no earlier than 2014-08-15 |  |  |  |
