Schedule from MS Project, 2014-06-03 to 2015-01-30, A marks actual dates.

## Calendars

- 标准: Mon-Fri 08:00-12:00, 13:00-17:00; Sat-Sun off.

## Resources

| Resource |
| --- |
| 戴翔 |
| 产品组 |
| 杨健 |
| 宋涛 |
| 刘俊豪 |
| 李海峰 |
| 黄志超 |
| 梁思敏 |
| 店多 |
| 待定 |
| 待设计 |
| 商务部 |
| 蔡久兵 |
| 聂保定 |
| 邓增健 |
| 宾兰芳 |
| 开发组 |
| 覃子超 |
| 李海锋 |
| 肖雨 |
| 黄志祥 |
| 陈光池 |
| iOS(视任务进展待定) |
| 体验部 |

## Schedule

| ID | WBS | Task | Duration | Start | Finish | Predecessors | Complete | Remaining | Total slack | Constraint | Resources | Work | Actual work |
| --- | --- | --- | --- | --- | --- | --- | --- | --- | --- | --- | --- | --- | --- |
| 1 | 1 | **一、产品版本发布计划** | 173d? | 2014-06-04 A | 2015-01-30 |  | 65% | 60.6d? | 0d |  |  | 3992h | 1296h |
| 2 | 1.1 | 微信下载页面改为打开浏览器后自动下载 | 44d? | 2014-06-04 A | 2014-08-04 A |  | 100% |  |  | finish no earlier than 2014-08-04 |  |  |  |
| 3 | 1.2 | **注册流程优化** | 12d? | 2014-06-04 A | 2014-06-19 A |  | 100% |  |  |  |  | 224h | 224h |
| 4 | 1.2.1 | 流程设计 | 1d? | 2014-06-05 A | 2014-06-05 A |  | 100% |  |  | finish no earlier than 2014-06-05 | 产品组; 杨健 | 16h | 16h |
| 5 | 1.2.2 | iOS调整 | 10d? | 2014-06-06 A | 2014-06-19 A | 4 | 100% |  |  | finish no earlier than 2014-06-13 | 刘俊豪 | 80h | 80h |
| 6 | 1.2.3 | Android调整 | 10d? | 2014-06-06 A | 2014-06-19 A | 4 | 100% |  |  | finish no earlier than 2014-06-13 | 黄志超 | 80h | 80h |
| 7 | 1.2.4 | 后台调整 | 5d? | 2014-06-09 A | 2014-06-13 A | 4 | 100% |  |  | finish no earlier than 2014-06-13 | 戴翔 | 40h | 40h |
| 8 | 1.2.5 | 修改密码功能 | 1d? | 2014-06-04 A | 2014-06-04 A |  | 100% |  |  |  | 产品组 | 8h | 8h |
| 9 | 1.3 | **2.0.0版本发布目标** | 9d? | 2014-06-12 A | 2014-06-24 A |  | 100% |  |  |  |  | 104h | 104h |
| 10 | 1.3.1 | 手机充值模块不设权限 | 4d? | 2014-06-12 A | 2014-06-17 A |  | 100% |  |  | finish no earlier than 2014-06-17 | 刘俊豪; 黄志超 | 64h | 64h |
| 11 | 1.3.2 | 系统设置功能调整 | 1d? | 2014-06-17 A | 2014-06-17 A |  | 100% |  |  | finish no earlier than 2014-06-17 | 刘俊豪; 黄志超 | 16h | 16h |
| 12 | 1.3.3 | 用户修改密码功能修正 | 1d? | 2014-06-18 A | 2014-06-18 A |  | 100% |  |  | finish no earlier than 2014-06-18 | 刘俊豪; 黄志超 | 16h | 16h |
| 13 | 1.3.4 | Android的找回密码功能 | 1d? | 2014-06-19 A | 2014-06-19 A |  | 100% |  |  | finish no earlier than 2014-06-19 | 黄志超 | 8h | 8h |
| 14 | 1.3.5 | 代理商功能调测 | 1d? | 2014-06-24 A | 2014-06-24 A | 77 | 100% |  |  | finish no earlier than 2014-06-24 |  |  |  |
| 15 | 1.3.6 | 水电煤修改为欧飞接口 | 2d? | 2014-06-23 A | 2014-06-24 A | 98 | 100% |  |  | finish no earlier than 2014-06-24 |  |  |  |
| 16 | 1.4 | **2.0.1版本发布目标** | 20d? | 2014-06-16 A | 2014-07-11 A |  | 100% |  |  |  |  | 440h | 440h |
| 17 | 1.4.1 | **首页界面改版** | 20d? | 2014-06-16 A | 2014-07-11 A |  | 100% |  |  |  |  | 280h | 280h |
| 18 | 1.4.1.1 | 首页新界面设计 | 10d? | 2014-06-16 A | 2014-06-27 A |  | 100% |  |  | finish no earlier than 2014-06-27 | 杨健; 梁思敏 | 160h | 160h |
| 19 | 1.4.1.2 | 界面风格调整 | 5d? | 2014-06-30 A | 2014-07-04 A | 18 | 100% |  |  | start no earlier than 2014-06-30 | 产品组 | 40h | 40h |
| 20 | 1.4.1.3 | 多界面风格切换 | 5d? | 2014-07-07 A | 2014-07-11 A |  | 100% |  |  | start no earlier than 2014-07-07 | 产品组 | 40h | 40h |
| 21 | 1.4.1.4 | 代理商增加在线申请及审批功能 | 5d? | 2014-06-30 A | 2014-07-04 A |  | 100% |  |  | finish no earlier than 2014-07-04 | 产品组 | 40h | 40h |
| 22 | 1.4.2 | 游戏充值模块上线 | 5d? | 2014-06-30 A | 2014-07-04 A |  | 100% |  |  | finish no earlier than 2014-07-04 | 产品组 | 40h | 40h |
| 23 | 1.4.3 | 飞机票预定模块上线 | 10d? | 2014-06-30 A | 2014-07-11 A |  | 100% |  |  | finish no earlier than 2014-07-11 | 产品组 | 80h | 80h |
| 24 | 1.4.4 | 酒店、火车票、景点门票用携程联盟链接嵌入 | 5d? | 2014-06-30 A | 2014-07-04 A |  | 100% |  |  | finish no earlier than 2014-07-04 | 产品组 | 40h | 40h |

| ID | WBS | Task | Duration | Start | Finish | Predecessors | Complete | Constraint | Resources | Work | Actual work |
| --- | --- | --- | --- | --- | --- | --- | --- | --- | --- | --- | --- |
| 25 | 1.5 | **2.0.4版本发布目标** | 8d? | 2014-07-16 A | 2014-07-25 A |  | 100% |  |  |  |  |
| 26 | 1.5.1 | 易宝支付通道对接 | 8d? | 2014-07-16 A | 2014-07-25 A |  | 100% | finish no earlier than 2014-07-25 |  |  |  |
| 27 | 1.5.2 | 首页版面及模式优化 | 8d? | 2014-07-16 A | 2014-07-25 A |  | 100% | finish no earlier than 2014-07-25 |  |  |  |
| 28 | 1.5.3 | 代理商在线申请、用呼绑定 | 8d? | 2014-07-16 A | 2014-07-25 A |  | 100% | finish no earlier than 2014-07-25 |  |  |  |
| 29 | 1.6 | **2.1.0版本发布目标** | 7d? | 2014-08-01 A | 2014-08-11 A |  | 100% |  |  |  |  |
| 30 | 1.6.1 | 易宝代付通道对接 | 6d? | 2014-08-01 A | 2014-08-08 A |  | 100% | finish no earlier than 2014-08-08 |  |  |  |
| 31 | 1.6.2 | 快捷支付功能 | 2d? | 2014-08-07 A | 2014-08-08 A |  | 100% | finish no earlier than 2014-08-08 |  |  |  |
| 32 | 1.6.3 | 首页增加通知公告 | 3d? | 2014-08-04 A | 2014-08-06 A |  | 100% | start no earlier than 2014-08-04 |  |  |  |
| 33 | 1.6.4 | 增加一键关注微信嵌套页 | 1d? | 2014-08-07 A | 2014-08-07 A |  | 100% | start no earlier than 2014-08-07 |  |  |  |
| 34 | 1.6.5 | 版本功能整合测试 | 2d? | 2014-08-08 A | 2014-08-11 A |  | 100% | finish no earlier than 2014-08-11 |  |  |  |
| 35 | 1.7 | **3.0.0版本发布目标** | 7d? | 2014-09-22 A | 2014-09-30 A |  | 100% |  |  |  |  |
| 36 | 1.7.1 | 转账汇款流程优化 | 7d? | 2014-09-22 A | 2014-09-30 A |  | 100% | start no earlier than 2014-09-22 |  |  |  |
| 37 | 1.7.2 | 模块界面设计统一 | 7d? | 2014-09-22 A | 2014-09-30 A |  | 100% | finish no earlier than 2014-09-30 |  |  |  |
| 38 | 1.7.3 | 版本功能整合测试及回归问题修正 | 3d? | 2014-09-26 A | 2014-09-30 A |  | 100% | start no earlier than 2014-09-26 |  |  |  |
| 39 | 1.7.4 | 版本发布 | 1d? | 2014-09-30 A | 2014-09-30 A |  | 100% | start no earlier than 2014-09-30 |  |  |  |
| 40 | 1.8 | **3.3.0版本发布目标** | 38d? | 2014-10-08 A | 2014-11-28 A |  | 100% |  |  |  |  |
| 41 | 1.8.1 | 商城对接（视商务洽谈结果再定） | 20d? | 2014-11-03 A | 2014-11-28 A |  | 100% | finish no earlier than 2014-11-28 |  |  |  |
| 42 | 1.8.2 | 汇通宝对接 | 3d? | 2014-10-08 A | 2014-10-10 A |  | 100% | finish no earlier than 2014-10-10 |  |  |  |
| 43 | 1.8.3 | 版本功能整合测试及回归问题修正 | 7d? | 2014-10-08 A | 2014-10-16 A |  | 100% | start no earlier than 2014-10-08 |  |  |  |
| 44 | 1.8.4 | 版本发布 | 1d? | 2014-10-17 A | 2014-10-17 A |  | 100% | start no earlier than 2014-10-17 |  |  |  |
| 45 | 1.9 | **3.4.0版本发布目标** | 20d? | 2014-11-03 A | 2014-11-28 A |  | 100% |  |  | 528h | 528h |
| 46 | 1.9.1 | 代理商注册入口优化（单独发布V3.3.2） | 1d? | 2014-11-07 A | 2014-11-07 A |  | 100% | finish no earlier than 2014-11-07 | 蔡久兵 | 8h | 8h |
| 47 | 1.9.2 | 飞机票订购支付及分润完善 | 16d? | 2014-11-03 A | 2014-11-24 A |  | 100% | finish no earlier than 2014-11-24 | 聂保定; 邓增健; 黄志超 | 384h | 384h |
| 48 | 1.9.3 | 各家商城订单导入及分润报表 | 10d? | 2014-11-03 A | 2014-11-14 A |  | 100% | finish no earlier than 2014-11-14 | 蔡久兵 | 80h | 80h |
| 49 | 1.9.4 | 版本功能整合测试及回归问题修正 | 2d? | 2014-11-25 A | 2014-11-26 A | 46, 47, 48 | 100% | start no earlier than 2014-11-25 | 宾兰芳; 开发组; 体验部 | 48h | 48h |
| 50 | 1.9.5 | 版本发布 | 1d? | 2014-11-28 A | 2014-11-28 A | 49 | 100% | start no earlier than 2014-11-28 | 杨健 | 8h | 8h |

| ID | WBS | Task | Duration | Start | Finish | Predecessors | Total slack | Free slack | Constraint | Resources | Work |
| --- | --- | --- | --- | --- | --- | --- | --- | --- | --- | --- | --- |
| 51 | 1.10 | **3.5.0版本发布目标** | 10d? | 2014-11-24 | 2014-12-05 |  | 40d |  |  |  | 496h |
| 52 | 1.10.1 | 短信收款功能 | 5d? | 2014-11-24 | 2014-11-28 |  | 41.33d | 1.33d | finish no earlier than 2014-11-28 | 覃子超; 李海锋; 肖雨; 黄志祥 | 160h |
| 53 | 1.10.2 | 发工资功能 | 5d? | 2014-11-24 | 2014-11-28 |  | 41.33d | 1.33d | finish no earlier than 2014-11-28 | 覃子超; 陈光池; 刘俊豪; 黄志祥 | 160h |
| 54 | 1.10.3 | 代理商版面调整（授权码分配功能在3.6.0版本做） | 4d? | 2014-11-25 | 2014-11-28 |  | 41.33d | 1.33d | start no earlier than 2014-11-25 | 覃子超; iOS(视任务进展待定); 黄志祥 | 96h |
| 55 | 1.10.4 | 版本功能整合测试及回归问题修正 | 3d? | 2014-12-02 | 2014-12-04 | 52, 53, 54 | 40d | 0d | start no earlier than 2014-12-02 | 宾兰芳; 开发组; 体验部 | 72h |
| 56 | 1.10.5 | 版本发布 | 1d? | 2014-12-05 | 2014-12-05 | 55 | 40d |  | start no earlier than 2014-12-05 | 杨健 | 8h |
| 57 | 1.11 | **3.6.0版本发布目标** | 20d? | 2014-11-24 | 2014-12-19 |  | 30d |  |  |  | 1224h |
| 58 | 1.11.1 | **授权码运作相关功能** | 15d? | 2014-11-24 | 2014-12-12 |  | 30d |  |  |  | 1120h |
| 59 | 1.11.1.1 | 授权码主功能（购买、分配、使用） | 15d? | 2014-11-24 | 2014-12-12 |  | 30d | 0d | start no earlier than 2014-11-24 | 蔡久兵; 李海锋; 肖雨; 黄志祥 | 480h |
| 60 | 1.11.1.2 | 统一支付收银台 | 15d? | 2014-11-24 | 2014-12-12 |  | 30d | 0d | finish no earlier than 2014-12-12 | 蔡久兵; 陈光池; 刘俊豪; 黄志祥 | 480h |
| 61 | 1.11.1.3 | 用户资料登记（风控支撑） | 5d? | 2014-11-24 | 2014-11-28 |  | 40d | 10d | start no earlier than 2014-11-24 | 覃子超; 李海锋; 肖雨; 黄志祥 | 160h |
| 62 | 1.11.2 | 版本功能整合测试及回归问题修正 | 4d? | 2014-12-15 | 2014-12-18 | 59, 60, 61 | 8d | 0d | finish no earlier than 2014-12-18 | 宾兰芳; 开发组; 体验部 | 96h |
| 63 | 1.11.3 | 版本发布 | 1d? | 2014-12-19 | 2014-12-19 | 62 | 8d |  | start no earlier than 2014-11-28 | 杨健 | 8h |
| 64 | 1.12 | **3.7.0版本发布目标** | 23d? | 2014-12-01 | 2014-12-31 |  | 22d |  |  |  | 656h |
| 65 | 1.12.1 | 酒店预定 | 15d? | 2014-12-01 | 2014-12-19 | 47 | 22d | 0d | finish no earlier than 2014-12-19 | 聂保定; 邓增健; 黄志超; 黄志祥 | 480h |
| 66 | 1.12.2 | 版本功能整合测试及回归问题修正 | 7d? | 2014-12-22 | 2014-12-30 | 65 | 22d |  | finish no earlier than 2014-12-30 | 宾兰芳; 开发组; 体验部 | 168h |
| 67 | 1.12.3 | 版本发布 | 1d? | 2014-12-31 | 2014-12-31 | 66 | 22d |  | start no earlier than 2014-12-31 | 杨健 | 8h |
| 68 | 1.13 | **3.8.0版本发布目标** | 20d? | 2015-01-05 | 2015-01-30 |  | 0d |  |  |  | 240h |
| 69 | 1.13.1 | 彩票 | 10d? | 2015-01-05 | 2015-01-16 |  | 10d |  | finish no earlier than 2015-01-16 | 待定 | 80h |
| 70 | 1.13.2 | 电影票 | 10d? | 2015-01-05 | 2015-01-16 |  | 10d |  | finish no earlier than 2015-01-16 | 待定 | 80h |
| 71 | 1.13.3 | 版本功能整合测试及回归问题修正 | 9d? | 2015-01-19 | 2015-01-29 |  | 1d |  | finish no earlier than 2015-01-29 | 待定 | 72h |
| 72 | 1.13.4 | 版本发布 | 1d? | 2015-01-30 | 2015-01-30 |  | 0d |  | start no earlier than 2015-01-30 | 待定 | 8h |
| 73 | 1.14 | **4.0.0版本发布目标** | 10d? | 2015-01-19 | 2015-01-30 |  | 0d |  |  | 待定 | 80h |
| 74 | 1.14.1 | 虚拟代理商转让等相关运作功能 | 10d? | 2015-01-19 | 2015-01-30 |  | 0d |  | finish no earlier than 2015-01-30 |  |  |
| 75 | 1.14.2 | 汇通优惠卡运作 | 10d? | 2015-01-19 | 2015-01-30 |  | 0d |  | finish no earlier than 2015-01-30 |  |  |

| ID | WBS | Task | Type | Duration | Start | Finish | Predecessors | Complete | Remaining | Total slack | Constraint | Resources | Work | Actual work |
| --- | --- | --- | --- | --- | --- | --- | --- | --- | --- | --- | --- | --- | --- | --- |
| 76 | 2 | **二、产品规划功能** |  | 66d? | 2014-06-03 A | 2014-09-02 |  | 50% | 33d? | 108d |  |  | 2216h | 1376h |
| 77 | 2.1 | **代理商模块** |  | 12d? | 2014-06-03 A | 2014-06-18 A |  | 100% |  |  |  |  | 208h | 208h |
| 78 | 2.1.1 | 原型设计 |  | 1d? | 2014-06-10 A | 2014-06-10 A |  | 100% |  |  | finish no earlier than 2014-06-10 | 杨健; 梁思敏 | 16h | 16h |
| 79 | 2.1.2 | iOS开发 |  | 3d? | 2014-06-11 A | 2014-06-13 A | 78 | 100% |  |  | start no earlier than 2014-06-11 | 刘俊豪 | 24h | 24h |
| 80 | 2.1.3 | Android开发 |  | 2d? | 2014-06-12 A | 2014-06-13 A | 78 | 100% |  |  | finish no earlier than 2014-06-13 | 黄志超 | 16h | 16h |
| 81 | 2.1.4 | 后台接口开发 |  | 7d? | 2014-06-03 A | 2014-06-11 A |  | 100% |  |  | finish no earlier than 2014-06-11 | 戴翔 | 56h | 56h |
| 82 | 2.1.5 | 店多后台开发 |  | 12d? | 2014-06-03 A | 2014-06-18 A |  | 100% |  |  | start no earlier than 2014-06-03 | 店多 | 96h | 96h |
| 83 | 2.2 | **明盛商城对接** |  | 23d? | 2014-08-01 | 2014-09-02 |  |  |  | 108d |  | 待定 | 184h |  |
| 84 | 2.2.1 | 申请信用卡 |  | 23d? | 2014-08-01 | 2014-09-02 |  |  |  | 73d | start no earlier than 2014-08-01 |  |  |  |
| 85 | 2.2.2 | 承兑兑现 |  | 23d? | 2014-08-01 | 2014-09-02 |  |  |  | 73d | start no earlier than 2014-08-01 |  |  |  |
| 86 | 2.2.3 | 网上订购 |  | 23d? | 2014-08-01 | 2014-09-02 |  |  |  | 73d | start no earlier than 2014-08-01 |  |  |  |
| 87 | 2.3 | 热门应用链接 | milestone | 0d? | 2014-08-01 A |  |  | 100% | 0d? | 0d | finish no earlier than 2014-09-01 |  |  |  |
| 88 | 2.4 | **我的钱包** |  | 50d? | 2014-06-23 A | 2014-08-29 |  | 57% | 21.65d? | 110d |  | 待定 | 1616h | 960h |
| 89 | 2.4.1 | **原型设计** |  | 10d? | 2014-06-23 A | 2014-07-04 A |  | 100% |  |  |  |  | 880h | 880h |
| 90 | 2.4.1.1 | 账户余额 |  | 10d? | 2014-06-23 A | 2014-07-04 A |  | 100% |  |  | finish no earlier than 2014-07-04 | 杨健; 梁思敏 | 160h | 160h |
| 91 | 2.4.1.2 | 充值 |  | 10d? | 2014-06-23 A | 2014-07-04 A |  | 100% |  |  | finish no earlier than 2014-07-04 | 杨健; 梁思敏 | 160h | 160h |
| 92 | 2.4.1.3 | 转账 |  | 10d? | 2014-06-23 A | 2014-07-04 A |  | 100% |  |  | finish no earlier than 2014-07-04 | 杨健; 梁思敏 | 160h | 160h |
| 93 | 2.4.1.4 | 提现 |  | 10d? | 2014-06-23 A | 2014-07-04 A |  | 100% |  |  | finish no earlier than 2014-07-04 | 杨健; 梁思敏 | 160h | 160h |
| 94 | 2.4.1.5 | 红包 |  | 10d? | 2014-06-23 A | 2014-07-04 A |  | 100% |  |  | finish no earlier than 2014-07-04 | 杨健; 梁思敏 | 160h | 160h |
| 95 | 2.4.1.6 | 收支记录 |  | 5d? | 2014-06-30 A | 2014-07-04 A |  | 100% |  |  | finish no earlier than 2014-07-04 | 杨健; 梁思敏 | 80h | 80h |
| 96 | 2.4.2 | 当面付 |  | 21d? | 2014-08-01 | 2014-08-29 |  |  |  | 75d | finish no earlier than 2014-08-29 | 待定 | 168h |  |
| 97 | 2.4.3 | 功能开发 |  | 21d? | 2014-08-01 | 2014-08-29 |  |  |  | 75d | finish no earlier than 2014-08-29 | 待定 | 168h |  |
| 98 | 2.5 | **水电煤气缴费（合作需变更）** |  | 8d? | 2014-06-04 A | 2014-06-13 A |  | 100% |  |  |  |  | 56h | 56h |
| 99 | 2.5.1 | 原型设计 |  | 1d? | 2014-06-04 A | 2014-06-04 A |  | 100% |  |  |  | 杨健; 梁思敏 | 16h | 16h |
| 100 | 2.5.2 | 接口封装 |  | 1d? | 2014-06-13 A | 2014-06-13 A | 99 | 100% |  |  | finish no earlier than 2014-06-13 | 戴翔 | 8h | 8h |
| 101 | 2.5.3 | iOS开发 |  | 2d? | 2014-06-09 A | 2014-06-10 A | 99 | 100% |  |  | finish no earlier than 2014-06-10 | 宋涛 | 16h | 16h |
| 102 | 2.5.4 | Android开发 |  | 2d? | 2014-06-09 A | 2014-06-10 A | 99 | 100% |  |  | finish no earlier than 2014-06-10 | 李海峰 | 16h | 16h |

| ID | WBS | Task | Duration | Start | Finish | Predecessors | Complete | Constraint | Resources | Work | Actual work |
| --- | --- | --- | --- | --- | --- | --- | --- | --- | --- | --- | --- |
| 103 | 2.6 | **游戏直充（欧飞）** | 51d? | 2014-06-06 A | 2014-08-15 A |  | 100% |  |  | 152h | 152h |
| 104 | 2.6.1 | 原型设计 | 2d? | 2014-06-06 A | 2014-06-09 A |  | 100% | finish no earlier than 2014-06-09 | 杨健; 梁思敏 | 32h | 32h |
| 105 | 2.6.2 | 接口封装 | 5d? | 2014-06-09 A | 2014-06-13 A | 104 | 100% | start no earlier than 2014-06-09 | 戴翔 | 40h | 40h |
| 106 | 2.6.3 | iOS开发 | 5d? | 2014-06-09 A | 2014-06-13 A | 104 | 100% | finish no earlier than 2014-06-13 | 宋涛 | 40h | 40h |
| 107 | 2.6.4 | Android开发 | 5d? | 2014-06-09 A | 2014-06-13 A | 104 | 100% | finish no earlier than 2014-06-13 | 李海峰 | 40h | 40h |
| 108 | 2.6.5 | 接口调试 | 3d? | 2014-06-25 A | 2014-06-27 A |  | 100% | finish no earlier than 2014-06-27 |  |  |  |
| 109 | 2.6.6 | 游戏充值优化（本地预存商品及分润） | 5d? | 2014-08-11 A | 2014-08-15 A |  | 100% | finish no earlier than 2014-08-15 |  |  |  |
